# Tailspin Remote Drone 3-4

Schedule from MS Project, 2019-01-07 to 2019-03-07, costs in $.

## Calendars

- Standard: Mon-Fri 08:00-12:00, 13:00-17:00; Sat-Sun off. Exceptions (off unless hours are given): 2019-01-21 to 2021-01-18 (Martin Luther King Jr. Day , recurring).

## Resources

| Resource | Unit | Rate | Notes |
| --- | --- | --- | --- |
| Jamie Reding |  | 37.5 | Jamie on vacation Jan 14 and 15; available for consult at home if necessary |
| Scott Seely |  | 22.5 |  |
| Jeff Pike |  | 25 |  |
| Judy Lew |  | 29.5 |  |
| Brenda Diaz |  | 19.75 |  |
| Brad Sutton |  | 16.5 |  |
| Annette Hill |  | 20 |  |
| Ryan Ihrig |  | 16 |  |
| Yan Li |  | 28.5 |  |
| Model technician |  | 16.5 |  |
| Digital camera |  | 7.5 |  |
| Anemometer |  | 0.5 |  |
| Safety tether |  | 0.12 |  |
| Clipboards |  |  |  |
| Large Conference Room |  |  |  |
| Small Conference Room |  |  |  |
| SD Card | 4 GB |  |  |
| Printer paper | Ream |  |  |
| Travel |  |  |  |
| Food |  |  |  |
| Bottled water | case | 5 |  |
| Pens | 12 count box | 3 |  |
| Survey Team Member |  | 15 |  |

## Schedule

| ID | WBS | Task | Type | Duration | Start | Finish | Predecessors | Total slack | Resources | Work | Cost |
| --- | --- | --- | --- | --- | --- | --- | --- | --- | --- | --- | --- |
| 1 | 1 | **Target Market Research and Analysis** |  | 27.95d | 2019-01-07 | 2019-02-14 |  | 0d |  | 256h | 6,775.42 |
| 2 | 1.1 | **Research** |  | 18.95d | 2019-01-07 | 2019-02-01 |  | 0d |  | 256h | 6,775.42 |
| 3 | 1.1.1 | Research begins | milestone | 0d | 2019-01-07 | 2019-01-07 |  | 0d |  |  |  |
| 4 | 1.1.2 | **Surveys** |  | 6.99d | 2019-01-07 | 2019-01-15 |  | 0d |  | 129h | 2,821.59 |
| 5 | 1.1.2.1 | Develop survey questionnaire |  | 2.12d | 2019-01-07 | 2019-01-08 | 3 | 0d | Scott Seely; Jeff Pike; Annette Hill [50%]; Brad Sutton | 48h | 1,003.73 |
| 6 | 1.1.2.2 | Review and approval of survey |  | 1h | 2019-01-08 | 2019-01-08 | 5 | 0d | Jeff Pike | 1h | 25 |
| 7 | 1.1.2.3 | Conduct survey |  | 1.2w | 2019-01-08 | 2019-01-15 | 6 | 35.96d | Judy Lew [57.1%]; Scott Seely [57.1%]; Annette Hill [28.6%]; Ryan Ihrig [57.1%]; Bottled water [2 case] | 80h | 1,792.86 |
| 8 | 1.1.3 | **Focus Groups** |  | 11.33d | 2019-01-08 | 2019-01-25 |  | 0d |  | 112h | 3,081.33 |
| 9 | 1.1.3.1 | Identify focus group member demographics |  | 1.33d | 2019-01-08 | 2019-01-10 | 6 | 0d | Jeff Pike; Yan Li; Brenda Diaz | 32h | 781.33 |
| 10 | 1.1.3.2 | Contact potential focus group members |  | 5d | 2019-01-10 | 2019-01-17 | 9 | 0d | Brad Sutton; Yan Li | 80h | 1,800 |
| 11 | 1.1.3.3 | Conduct focus groups |  | 1w | 2019-01-17 | 2019-01-25 | 10 | 0d | Food [0.1%] |  | 500 |
| 12 | 1.1.4 | **Observations** |  | 5.62d | 2019-01-25 | 2019-02-01 |  | 0d |  | 15h | 872.5 |
| 13 | 1.1.4.1 | Identify observation parameters |  | 4h | 2019-01-25 | 2019-01-25 | 11 | 0d | Annette Hill [50%]; Brenda Diaz; Brad Sutton; Jamie Reding | 14h | 335 |
| 14 | 1.1.4.2 | Select observation locations |  | 1h | 2019-01-25 | 2019-01-25 | 13 | 0d | Jamie Reding | 1h | 37.5 |
| 15 | 1.1.4.3 | Conduct observations |  | 1w | 2019-01-25 | 2019-02-01 | 14 | 0d | Food [0.1%] |  | 500 |
| 16 | 1.1.5 | Research complete | milestone | 0d | 2019-02-01 | 2019-02-01 | 15 | 24d |  |  |  |
| 17 | 1.2 | **Analysis** |  | 14d | 2019-01-25 | 2019-02-14 |  | 0d |  |  |  |
| 18 | 1.2.1 | Analysis begins | milestone | 0d | 2019-01-25 | 2019-01-25 | 15SS | 0d |  |  |  |
| 19 | 1.2.2 | **Analysis of Research Data** |  | 8d | 2019-01-25 | 2019-02-06 |  | 0d |  |  |  |
| 20 | 1.2.2.1 | Analyze surveys, focus groups, and observations |  | 2d | 2019-01-25 | 2019-01-29 | 18 | 0d |  |  |  |
| 21 | 1.2.2.2 | Create follow up actions for secondary research |  | 1d | 2019-01-29 | 2019-01-30 | 20 | 0d |  |  |  |
| 22 | 1.2.2.3 | Conduct secondary research |  | 1w | 2019-01-30 | 2019-02-06 | 21 | 0d |  |  |  |
| 23 | 1.2.3 | **Report of Research Findings** |  | 7d | 2019-02-05 | 2019-02-14 |  | 0d |  |  |  |
| 24 | 1.2.3.1 | Compile draft copy of report |  | 8h | 2019-02-05 | 2019-02-06 | 22FF | 0d |  |  |  |
| 25 | 1.2.3.2 | Draft copy review period |  | 5d | 2019-02-06 | 2019-02-13 | 24 | 0d |  |  |  |
| 26 | 1.2.3.3 | Review comments and compile final report |  | 1d | 2019-02-13 | 2019-02-14 | 25 | 0d |  |  |  |
| 27 | 1.2.4 | Analysis complete | milestone | 0d | 2019-02-14 | 2019-02-14 | 26 | 0d |  |  |  |

Notes:
- 7: Contact Mark Hanson in Marketing for additional resource support.

| ID | WBS | Task | Type | Duration | Start | Finish | Predecessors | Total slack |
| --- | --- | --- | --- | --- | --- | --- | --- | --- |
| 28 | 2 | **Design** |  | 4d? | 2019-02-14 | 2019-02-20 |  | 0d |
| 29 | 2.1 | Design begins | milestone | 0d | 2019-02-14 | 2019-02-14 | 27 | 0d |
| 30 | 2.2 | Research Findings Evaluation |  | 1d? | 2019-02-14 | 2019-02-15 | 29 | 0d |
| 31 | 2.3 | Design Document |  | 1d? | 2019-02-15 | 2019-02-18 | 30 | 0d |
| 32 | 2.4 | Proof of Concept |  | 1d? | 2019-02-18 | 2019-02-19 | 31 | 0d |
| 33 | 2.5 | Final Design Selection |  | 1d? | 2019-02-19 | 2019-02-20 | 32 | 0d |
| 34 | 2.6 | Design complete | milestone | 0d | 2019-02-20 | 2019-02-20 | 33 | 0d |
| 35 | 3 | **Product Development** |  | 4d? | 2019-02-20 | 2019-02-26 |  | 0d |
| 36 | 3.1 | Product development begins | milestone | 0d | 2019-02-20 | 2019-02-20 | 34 | 0d |
| 37 | 3.2 | Initial Prototype |  | 1d? | 2019-02-20 | 2019-02-21 | 36 | 0d |
| 38 | 3.3 | Internal Testing |  | 1d? | 2019-02-21 | 2019-02-22 | 37 | 0d |
| 39 | 3.4 | Raw Materials List |  | 1d? | 2019-02-22 | 2019-02-25 | 38 | 0d |
| 40 | 3.5 | Parts Designation |  | 1d? | 2019-02-25 | 2019-02-26 | 39 | 0d |
| 41 | 3.6 | Product development complete | milestone | 0d | 2019-02-26 | 2019-02-26 | 40 | 0d |
| 42 | 4 | **Production Planning** |  | 4d? | 2019-02-26 | 2019-03-04 |  | 0d |
| 43 | 4.1 | Production planning begins | milestone | 0d | 2019-02-26 | 2019-02-26 | 41 | 0d |
| 44 | 4.2 | High-level Production Plan |  | 1d? | 2019-02-26 | 2019-02-27 | 43 | 0d |
| 45 | 4.3 | Resource Planning |  | 1d? | 2019-02-27 | 2019-02-28 | 44 | 0d |
| 46 | 4.4 | Quality Control Design |  | 1d? | 2019-02-28 | 2019-03-01 | 45 | 0d |
| 47 | 4.5 | Final Production Plan Approval |  | 1d? | 2019-03-01 | 2019-03-04 | 46 | 0d |
| 48 | 4.6 | Production planning complete | milestone | 0d | 2019-03-04 | 2019-03-04 | 47 | 0d |
| 49 | 5 | **Marketing** |  | 3d? | 2019-03-04 | 2019-03-07 |  | 0d |
| 50 | 5.1 | Marketing phase begins | milestone | 0d | 2019-03-04 | 2019-03-04 | 48 | 0d |
| 51 | 5.2 | Marketing Strategy Development |  | 1d? | 2019-03-04 | 2019-03-05 | 50 | 0d |
| 52 | 5.3 | Marketing Plan Development and Approval |  | 1d? | 2019-03-05 | 2019-03-06 | 51 | 0d |
| 53 | 5.4 | Marketing Materials |  | 1d? | 2019-03-06 | 2019-03-07 | 52 | 0d |
| 54 | 5.5 | Marketing phase complete | milestone | 0d | 2019-03-07 | 2019-03-07 | 53 | 0d |
| 55 | 6 | Project Management |  | 1d? | 2019-01-07 | 2019-01-07 |  | 43.25d |
