# Tailspin Remote Drone 4-4

Schedule from MS Project, 2019-01-07 to 2019-05-22, costs in $.

## Calendars

- Standard: Mon-Fri 08:00-12:00, 13:00-17:00; Sat-Sun off. Exceptions (off unless hours are given): 2019-01-21 to 2021-01-18 (Martin Luther King Jr. Day , recurring).
- Survey Calendar: Mon-Sat 10:00-14:00, 15:00-19:00; Sun off. Exceptions (off unless hours are given): 2019-01-21 to 2021-01-18 (Martin Luther King Jr. Day , recurring).

## Resources

| Resource | Group | Unit | Rate | Notes |
| --- | --- | --- | --- | --- |
| Jamie Reding | Engineering |  | 37.5 | Jamie on vacation Jan 14 and 15; available for consult at home if necessary |
| Scott Seely | Marketing |  | 22.5 |  |
| Jeff Pike | Marketing |  | 25 |  |
| Judy Lew | Management |  | 29.5 |  |
| Brenda Diaz | Admininstrative |  | 19.75 |  |
| Brad Sutton | Marketing |  | 16.5 |  |
| Annette Hill | Administrative |  | 20 |  |
| Ryan Ihrig | Marketing |  | 16 |  |
| Yan Li |  |  | 28.5 |  |
| Model technician | Manufacturing |  | 16.5 |  |
| Digital camera | Equipment |  | 7.5 |  |
| Anemometer | Equipment |  | 0.5 |  |
| Safety tether | Equipment |  | 0.12 |  |
| Clipboards | Supplies |  |  |  |
| Large Conference Room | Facilities |  |  |  |
| Small Conference Room | Facilities |  |  |  |
| SD Card | Equipment | 4 GB | 12 |  |
| Printer paper | Supplies | Ream | 4 |  |
| Travel | Cost |  |  |  |
| Food | Cost |  |  |  |
| Bottled water | Supplies | case | 5 |  |
| Pens | Supplies | 12 count box | 3 |  |
| Survey Team Member | Marketing |  | 15 |  |
| Shu Ito | HR |  | 35 |  |
| Maria Hammond | Quality |  | 27.5 |  |
| Jim Kim | Quality |  | 28 |  |
| Bjorn Rettig | Engineering |  | 35 |  |
| Florian Voss | PMO |  | 37.5 |  |
| Jane Clayton | Manufacturing |  | 42.5 |  |
| Greg Guzik | Manufacturing |  | 32 |  |
| David Barber | Engineering |  | 43.75 |  |
| Eva Corets | Administrative |  | 15 |  |
| Frank Zhang | Management |  | 50 |  |
| Testing Field | Facilities |  |  |  |

## Schedule

| ID | WBS | Task | Type | Duration | Start | Finish | Predecessors | Total slack | Free slack | Calendar | Resources | Work | Cost |
| --- | --- | --- | --- | --- | --- | --- | --- | --- | --- | --- | --- | --- | --- |
| 1 | 1 | **Target Market Research and Analysis** |  | 32.07d | 2019-01-07 08:00 | 2019-02-21 08:32 |  | 3.33d |  |  |  | 675.6h | 18,811.09 |
| 2 | 1.1 | **Research** |  | 27.62d | 2019-01-07 08:00 | 2019-02-14 13:56 |  | 3.33d |  |  |  | 423h | 12,108.84 |
| 3 | 1.1.1 | Research begins | milestone | 0d | 2019-01-07 08:00 | 2019-01-07 08:00 |  | 2.38d | 0d |  |  |  |  |
| 4 | 1.1.2 | **Surveys** |  | 6.99d | 2019-01-07 08:00 | 2019-01-15 16:56 |  | 3.33d |  |  |  | 129h | 2,821.59 |
| 5 | 1.1.2.1 | Develop survey questionnaire |  | 2.12d | 2019-01-07 08:00 | 2019-01-08 15:56 | 3 | 2.38d | 0d |  | Scott Seely; Jeff Pike; Annette Hill [50%]; Brad Sutton | 48h | 1,003.73 |
| 6 | 1.1.2.2 | Review and approval of survey |  | 1h | 2019-01-08 15:56 | 2019-01-08 16:56 | 5 | 2.38d | 0d |  | Jeff Pike | 1h | 25 |
| 7 | 1.1.2.3 | Conduct survey |  | 1w | 2019-01-08 16:56 | 2019-01-15 16:56 | 6 | 97.01d |  | Survey Calendar | Judy Lew [57.1%]; Scott Seely [57.1%]; Annette Hill [28.6%]; Ryan Ihrig [57.1%]; Bottled water [2 case] | 80h | 1,792.86 |
| 8 | 1.1.3 | **Focus Groups** |  | 15d | 2019-01-08 16:56 | 2019-01-30 16:56 |  | 3.81d |  |  |  | 164h | 3,926 |
| 9 | 1.1.3.1 | Identify focus group member demographics |  | 1d | 2019-01-08 16:56 | 2019-01-09 16:56 | 6 | 2.38d | 0d |  | Jeff Pike; Yan Li; Brenda Diaz | 24h | 586 |
| 10 | 1.1.3.2 | Contact potential focus group members |  | 5d | 2019-01-09 16:56 | 2019-01-16 16:56 | 9 | 2.38d | 0d |  | Survey Team Member; Brad Sutton | 80h | 1,260 |
| 11 | 1.1.3.3 | Conduct focus groups |  | 1w | 2019-01-16 16:56 | 2019-01-30 16:56 | 10 | 2.38d | 0d |  | Food [0.1%]; Judy Lew; Annette Hill [50%] | 60h | 2,080 |
| 12 | 1.1.4 | **Observations** |  | 10.62d | 2019-01-30 16:56 | 2019-02-14 13:56 |  | 3.81d |  |  |  | 130h | 5,361.25 |
| 13 | 1.1.4.1 | Identify observation parameters |  | 4h | 2019-01-30 16:56 | 2019-01-31 11:56 | 11 | 2.38d | 0d |  | Brenda Diaz; Brad Sutton | 8h | 145 |
| 14 | 1.1.4.2 | Select observation locations |  | 1h | 2019-01-31 11:56 | 2019-01-31 13:56 | 13 | 2.38d | 0d |  | Brad Sutton; Brenda Diaz | 2h | 36.25 |
| 15 | 1.1.4.3 | Conduct observations |  | 2w | 2019-01-31 13:56 | 2019-02-14 13:56 | 14 | 2.38d | 0d |  | Food [0.1%]; Jamie Reding [50%]; Jeff Pike [50%]; Judy Lew [50%]; Travel [0.2%] | 120h | 5,180 |
| 16 | 1.1.5 | Research complete | milestone | 0d | 2019-02-14 13:56 | 2019-02-14 13:56 | 15 | 64.88d |  |  |  |  |  |
| 17 | 1.2 | **Analysis** |  | 14.45d | 2019-01-31 13:56 | 2019-02-21 08:32 |  | 3.68d |  |  |  | 252.6h | 6,702.25 |
| 18 | 1.2.1 | Analysis begins | milestone | 0d | 2019-01-31 13:56 | 2019-01-31 13:56 | 15SS | 2.38d | 0d |  |  |  |  |
| 19 | 1.2.2 | **Analysis of Research Data** |  | 8.45d | 2019-01-31 13:56 | 2019-02-13 08:32 |  | 3.68d |  |  |  | 162.6h | 4,285.25 |
| 20 | 1.2.2.1 | Analyze surveys, focus groups, and observations |  | 2.95d | 2019-01-31 13:56 | 2019-02-05 08:32 | 18 | 1.56d | 0d |  | Jamie Reding; David Barber; Scott Seely; Ryan Ihrig | 54.6h | 1,615.25 |
| 21 | 1.2.2.2 | Create follow up actions for secondary research |  | 1d | 2019-02-05 08:32 | 2019-02-06 08:32 | 20 | 1.56d | 0d |  | Annette Hill [50%]; Brenda Diaz; Brad Sutton; Eva Corets | 28h | 490 |
| 22 | 1.2.2.3 | Conduct secondary research |  | 1w | 2019-02-06 08:32 | 2019-02-13 08:32 | 21 | 1.56d | 0d |  | Jeff Pike; Judy Lew | 80h | 2,180 |
| 23 | 1.2.3 | **Report of Research Findings** |  | 7d | 2019-02-12 08:32 | 2019-02-21 08:32 |  | 3.68d |  |  |  | 90h | 2,417 |
| 24 | 1.2.3.1 | Compile draft copy of report |  | 8h | 2019-02-12 08:32 | 2019-02-13 08:32 | 22FF | 1.56d | 0d |  | Brenda Diaz | 8h | 158 |
| 25 | 1.2.3.2 | Draft copy review period |  | 5d | 2019-02-13 08:32 | 2019-02-20 08:32 | 24 | 1.56d | 0d |  | Bjorn Rettig [50%]; Brad Sutton [75%] | 50h | 1,195 |
| 26 | 1.2.3.3 | Review comments and compile final report |  | 1d | 2019-02-20 08:32 | 2019-02-21 08:32 | 25 | 1.56d | 0d |  | Brenda Diaz; David Barber; Jamie Reding; Greg Guzik | 32h | 1,064 |
| 27 | 1.2.4 | Analysis complete | milestone | 0d | 2019-02-21 08:32 | 2019-02-21 08:32 | 26 | 1.56d | 0d |  |  |  |  |

Notes:
- 7: Contact Mark Hanson in Marketing for additional resource support.

| ID | WBS | Task | Type | Duration | Start | Finish | Predecessors | Total slack | Free slack | Constraint | Resources | Work | Cost |
| --- | --- | --- | --- | --- | --- | --- | --- | --- | --- | --- | --- | --- | --- |
| 28 | 2 | **Design** |  | 8.25d | 2019-02-21 08:32 | 2019-03-05 10:32 |  | 3.68d |  |  |  | 190h | 5,301 |
| 29 | 2.1 | Design begins | milestone | 0d | 2019-02-21 08:32 | 2019-02-21 08:32 | 27 | 1.56d | 0d |  |  |  |  |
| 30 | 2.2 | Research Findings Evaluation |  | 1d | 2019-02-21 08:32 | 2019-02-22 08:32 | 29 | 1.56d | 0d |  | Jamie Reding; Judy Lew; Maria Hammond; David Barber | 32h | 1,106 |
| 31 | 2.3 | Design Document |  | 2d | 2019-02-22 08:32 | 2019-02-26 08:32 | 30 | 1.56d | 0d |  | Jamie Reding; Brenda Diaz | 32h | 916 |
| 32 | 2.4 | Proof of Concept |  | 5d | 2019-02-26 08:32 | 2019-03-05 08:32 | 31 | 1.56d | 0d |  | Model technician; Maria Hammond; Greg Guzik | 120h | 3,040 |
| 33 | 2.5 | Final Design Selection |  | 2h | 2019-03-05 08:32 | 2019-03-05 10:32 | 32 | 3.68d | 0d |  | Frank Zhang; Greg Guzik; Jamie Reding | 6h | 239 |
| 34 | 2.6 | Design complete | milestone | 0d | 2019-03-05 10:32 | 2019-03-05 10:32 | 33 | 1.56d | 0d |  |  |  |  |
| 35 | 3 | **Product Development** |  | 29.68d | 2019-03-05 10:32 | 2019-04-15 17:00 |  | 0d |  |  |  | 796h | 17,890 |
| 36 | 3.1 | Product development begins | milestone | 0d | 2019-03-05 10:32 | 2019-03-05 10:32 | 34 | 1.56d | 0d |  |  |  |  |
| 37 | 3.2 | Initial Prototype |  | 1w | 2019-03-05 10:32 | 2019-03-12 10:32 | 36 | 3.68d |  |  | Model technician [200%]; Jamie Reding; Jane Clayton | 120h | 3,860 |
| 38 | 3.3 | Internal Testing |  | 2w | 2019-03-18 08:00 | 2019-03-29 17:00 | 37 | 0d |  | start no earlier than 2019-03-18 08:00 | Maria Hammond; Jim Kim; Model technician; Jamie Reding [25%]; Testing Field | 340h | 6,510 |
| 39 | 3.4 | Raw Materials List |  | 8h | 2019-04-01 08:00 | 2019-04-01 17:00 | 38 | 0d |  |  | Jamie Reding; Eva Corets | 16h | 420 |
| 40 | 3.5 | Parts Designation |  | 2w | 2019-04-02 08:00 | 2019-04-15 17:00 | 39 | 0d |  |  | Eva Corets; Jamie Reding; Brad Sutton; Brenda Diaz | 320h | 7,100 |
| 41 | 3.6 | Product development complete | milestone | 0d | 2019-04-15 17:00 | 2019-04-15 17:00 | 40 | 0d |  |  |  |  |  |
| 42 | 4 | **Production Planning** |  | 9.25d | 2019-04-15 17:00 | 2019-04-29 10:00 |  | 0d |  |  |  | 380h | 10,971 |
| 43 | 4.1 | Production planning begins | milestone | 0d | 2019-04-15 17:00 | 2019-04-15 17:00 | 41 | 0d |  |  |  |  |  |
| 44 | 4.2 | High-level Production Plan |  | 5d | 2019-04-16 08:00 | 2019-04-22 17:00 | 43 | 0d |  |  | Bjorn Rettig; Eva Corets; Frank Zhang; Jane Clayton; Large Conference Room; Model technician | 240h | 6,360 |
| 45 | 4.3 | Resource Planning |  | 3d | 2019-04-23 08:00 | 2019-04-25 17:00 | 44 | 0d |  |  | Judy Lew; Frank Zhang; Jamie Reding; Eva Corets; Bjorn Rettig | 120h | 4,008 |
| 46 | 4.4 | Quality Control Design |  | 1d | 2019-04-26 08:00 | 2019-04-26 17:00 | 45 | 0d |  |  | Maria Hammond; Jim Kim | 16h | 444 |
| 47 | 4.5 | Final Production Plan Approval |  | 2h | 2019-04-29 08:00 | 2019-04-29 10:00 | 46 | 0d |  |  | Judy Lew; Frank Zhang | 4h | 159 |
| 48 | 4.6 | Production planning complete | milestone | 0d | 2019-04-29 10:00 | 2019-04-29 10:00 | 47 | 0d |  |  |  |  |  |
| 49 | 5 | **Marketing** |  | 16.93d | 2019-04-29 10:00 | 2019-05-22 09:24 |  | 0d |  |  |  | 646.8h | 13,902.25 |
| 50 | 5.1 | Marketing phase begins | milestone | 0d | 2019-04-29 10:00 | 2019-04-29 10:00 | 48 | 0d |  |  |  |  |  |
| 51 | 5.2 | Marketing Strategy Development |  | 1.18d | 2019-04-29 10:00 | 2019-04-30 09:24 | 50 | 0d |  |  | Scott Seely; Brad Sutton; Brenda Diaz | 22.8h | 448.25 |
| 52 | 5.3 | Marketing Plan Development and Approval |  | 1d | 2019-04-30 09:24 | 2019-05-01 09:24 | 51 | 0d |  |  | Frank Zhang; Judy Lew; Ryan Ihrig | 24h | 764 |
| 53 | 5.4 | Marketing Materials |  | 3w | 2019-05-01 09:24 | 2019-05-22 09:24 | 52 | 0d |  |  | Jeff Pike; Brenda Diaz; Brad Sutton; Ryan Ihrig; Yan Li | 600h | 12,690 |
| 54 | 5.5 | Marketing phase complete | milestone | 0d | 2019-05-22 09:24 | 2019-05-22 09:24 | 53 | 0d |  |  |  |  |  |

| ID | WBS | Task | Duration | Start | Finish | Total slack | Constraint | Resources | Work | Cost |
| --- | --- | --- | --- | --- | --- | --- | --- | --- | --- | --- |
| 55 | 6 | **Project Management** | 94.12d | 2019-01-07 08:00 | 2019-05-20 09:00 | 2.05d |  |  | 100h | 2,820 |
| 56 | 6.1 | **Status Meeting** | 94.12d | 2019-01-07 08:00 | 2019-05-20 09:00 | 2.05d |  |  | 100h | 2,820 |
| 57 | 6.1.1 | Status Meeting 1 | 1h | 2019-01-07 08:00 | 2019-01-07 09:00 | 94d | start no earlier than 2019-01-07 08:00 | Brad Sutton; Eva Corets; Jane Clayton; Judy Lew; Florian Voss | 5h | 141 |
| 58 | 6.1.2 | Status Meeting 2 | 1h | 2019-01-14 08:00 | 2019-01-14 09:00 | 89d | start no earlier than 2019-01-14 08:00 | Brad Sutton; Eva Corets; Jane Clayton; Judy Lew; Florian Voss | 5h | 141 |
| 59 | 6.1.3 | Status Meeting 3 | 1h | 2019-01-22 08:00 | 2019-01-22 09:00 | 84d | start no earlier than 2019-01-21 08:00 | Brad Sutton; Eva Corets; Jane Clayton; Judy Lew; Florian Voss | 5h | 141 |
| 60 | 6.1.4 | Status Meeting 4 | 1h | 2019-01-28 08:00 | 2019-01-28 09:00 | 80d | start no earlier than 2019-01-28 08:00 | Brad Sutton; Eva Corets; Jane Clayton; Judy Lew; Florian Voss | 5h | 141 |
| 61 | 6.1.5 | Status Meeting 5 | 1h | 2019-02-04 08:00 | 2019-02-04 09:00 | 75d | start no earlier than 2019-02-04 08:00 | Brad Sutton; Eva Corets; Jane Clayton; Judy Lew; Florian Voss | 5h | 141 |
| 62 | 6.1.6 | Status Meeting 6 | 1h | 2019-02-11 08:00 | 2019-02-11 09:00 | 70d | start no earlier than 2019-02-11 08:00 | Brad Sutton; Eva Corets; Jane Clayton; Judy Lew; Florian Voss | 5h | 141 |
| 63 | 6.1.7 | Status Meeting 7 | 1h | 2019-02-18 08:00 | 2019-02-18 09:00 | 65d | start no earlier than 2019-02-18 08:00 | Brad Sutton; Eva Corets; Jane Clayton; Judy Lew; Florian Voss | 5h | 141 |
| 64 | 6.1.8 | Status Meeting 8 | 1h | 2019-02-25 08:00 | 2019-02-25 09:00 | 62.05d | start no earlier than 2019-02-25 08:00 | Brad Sutton; Eva Corets; Jane Clayton; Judy Lew; Florian Voss | 5h | 141 |
| 65 | 6.1.9 | Status Meeting 9 | 1h | 2019-03-04 08:00 | 2019-03-04 09:00 | 57.05d | start no earlier than 2019-03-04 08:00 | Brad Sutton; Eva Corets; Jane Clayton; Judy Lew; Florian Voss | 5h | 141 |
| 66 | 6.1.10 | Status Meeting 10 | 1h | 2019-03-11 08:00 | 2019-03-11 09:00 | 52.05d | start no earlier than 2019-03-11 08:00 | Brad Sutton; Eva Corets; Jane Clayton; Judy Lew; Florian Voss | 5h | 141 |
| 67 | 6.1.11 | Status Meeting 11 | 1h | 2019-03-18 08:00 | 2019-03-18 09:00 | 47.05d | start no earlier than 2019-03-18 08:00 | Brad Sutton; Eva Corets; Jane Clayton; Judy Lew; Florian Voss | 5h | 141 |
| 68 | 6.1.12 | Status Meeting 12 | 1h | 2019-03-25 08:00 | 2019-03-25 09:00 | 42.05d | start no earlier than 2019-03-25 08:00 | Brad Sutton; Eva Corets; Jane Clayton; Judy Lew; Florian Voss | 5h | 141 |
| 69 | 6.1.13 | Status Meeting 13 | 1h | 2019-04-01 08:00 | 2019-04-01 09:00 | 37.05d | start no earlier than 2019-04-01 08:00 | Brad Sutton; Eva Corets; Jane Clayton; Judy Lew; Florian Voss | 5h | 141 |
| 70 | 6.1.14 | Status Meeting 14 | 1h | 2019-04-08 08:00 | 2019-04-08 09:00 | 32.05d | start no earlier than 2019-04-08 08:00 | Brad Sutton; Eva Corets; Jane Clayton; Judy Lew; Florian Voss | 5h | 141 |
| 71 | 6.1.15 | Status Meeting 15 | 1h | 2019-04-15 08:00 | 2019-04-15 09:00 | 27.05d | start no earlier than 2019-04-15 08:00 | Brad Sutton; Eva Corets; Jane Clayton; Judy Lew; Florian Voss | 5h | 141 |
| 72 | 6.1.16 | Status Meeting 16 | 1h | 2019-04-22 08:00 | 2019-04-22 09:00 | 22.05d | start no earlier than 2019-04-22 08:00 | Brad Sutton; Eva Corets; Jane Clayton; Judy Lew; Florian Voss | 5h | 141 |
| 73 | 6.1.17 | Status Meeting 17 | 1h | 2019-04-29 08:00 | 2019-04-29 09:00 | 17.05d | start no earlier than 2019-04-29 08:00 | Brad Sutton; Eva Corets; Jane Clayton; Judy Lew; Florian Voss | 5h | 141 |
| 74 | 6.1.18 | Status Meeting 18 | 1h | 2019-05-06 08:00 | 2019-05-06 09:00 | 12.05d | start no earlier than 2019-05-06 08:00 | Brad Sutton; Eva Corets; Jane Clayton; Judy Lew; Florian Voss | 5h | 141 |
| 75 | 6.1.19 | Status Meeting 19 | 1h | 2019-05-13 08:00 | 2019-05-13 09:00 | 7.05d | start no earlier than 2019-05-13 08:00 | Brad Sutton; Eva Corets; Jane Clayton; Judy Lew; Florian Voss | 5h | 141 |
| 76 | 6.1.20 | Status Meeting 20 | 1h | 2019-05-20 08:00 | 2019-05-20 09:00 | 2.05d | start no earlier than 2019-05-20 08:00 | Brad Sutton; Eva Corets; Jane Clayton; Judy Lew; Florian Voss | 5h | 141 |
