# Tailspin Remote Drone 4M

Schedule from MS Project, 2019-01-07 to 2019-05-09, costs in $.

## Calendars

- Standard: Mon-Fri 08:00-12:00, 13:00-17:00; Sat-Sun off. Exceptions (off unless hours are given): 2019-01-21 to 2021-01-18 (Martin Luther King Jr. Day , recurring).

## Resources

| Resource | Group | Unit | Rate | Notes |
| --- | --- | --- | --- | --- |
| Jamie Reding | Engineering |  | 37.5 | Jamie on vacation Jan 14 and 15; available for consult at home if necessary |
| Scott Seely | Marketing |  | 22.5 |  |
| Jeff Pike | Marketing |  | 25 |  |
| Judy Lew | Management |  | 29.5 |  |
| Brenda Diaz | Admininstrative |  | 19.75 |  |
| Brad Sutton | Marketing |  | 16.5 |  |
| Annette Hill | Administrative |  | 20 |  |
| Ryan Ihrig | Marketing |  | 16 |  |
| Yan Li |  |  | 28.5 |  |
| Model technician | Manufacturing |  | 16.5 |  |
| Digital camera | Equipment |  | 7.5 |  |
| Anemometer | Equipment |  | 0.5 |  |
| Safety tether | Equipment |  | 0.12 |  |
| Clipboards | Supplies |  |  |  |
| Large Conference Room | Facilities |  |  |  |
| Small Conference Room | Facilities |  |  |  |
| SD Card | Equipment | 4 GB | 12 |  |
| Printer paper | Supplies | Ream | 4 |  |
| Travel | Cost |  |  |  |
| Food | Cost |  |  |  |
| Bottled water | Supplies | case | 5 |  |
| Pens | Supplies | 12 count box | 3 |  |
| Survey Team Member | Marketing |  | 15 |  |
| Shu Ito | HR |  | 35 |  |
| Maria Hammond | Quality |  | 27.5 |  |
| Jim Kim | Quality |  | 28 |  |
| Bjorn Rettig | Engineering |  | 35 |  |
| Florian Voss | PMO |  | 37.5 |  |
| Jane Clayton | Manufacturing |  | 42.5 |  |
| Greg Guzik | Manufacturing |  | 32 |  |
| David Barber | Engineering |  | 43.75 |  |
| Eva Corets | Administrative |  | 15 |  |
| Frank Zhang | Management |  | 50 |  |
| Testing Field | Facilities |  |  |  |

## Schedule

| ID | WBS | Task | Type | Duration | Start | Finish | Predecessors | Total slack | Free slack | Resources | Work | Cost |
| --- | --- | --- | --- | --- | --- | --- | --- | --- | --- | --- | --- | --- |
| 1 | 1 | **Target Market Research and Analysis** |  | 27.57d | 2019-01-07 | 2019-02-14 |  | 0.33d |  |  | 705.6h | 19,676.09 |
| 2 | 1.1 | **Research** |  | 18.62d | 2019-01-07 | 2019-02-01 |  | 0.33d |  |  | 423h | 12,108.84 |
| 3 | 1.1.1 | Research begins | milestone | 0d | 2019-01-07 | 2019-01-07 |  | 0.33d | 0d |  |  |  |
| 4 | 1.1.2 | **Surveys** |  | 6.99d | 2019-01-07 | 2019-01-15 |  | 0.33d |  |  | 129h | 2,821.59 |
| 5 | 1.1.2.1 | Develop survey questionnaire |  | 2.12d | 2019-01-07 | 2019-01-08 | 3 | 0.33d | 0d | Scott Seely; Jeff Pike; Annette Hill [50%]; Brad Sutton | 48h | 1,003.73 |
| 6 | 1.1.2.2 | Review and approval of survey |  | 1h | 2019-01-08 | 2019-01-08 | 5 | 0.33d | 0d | Jeff Pike | 1h | 25 |
| 7 | 1.1.2.3 | Conduct survey |  | 1.2w | 2019-01-08 | 2019-01-15 | 6 | 81.08d |  | Judy Lew [57.1%]; Scott Seely [57.1%]; Annette Hill [28.6%]; Ryan Ihrig [57.1%]; Bottled water [2 case] | 80h | 1,792.86 |
| 8 | 1.1.3 | **Focus Groups** |  | 11d | 2019-01-08 | 2019-01-24 |  | 0.33d |  |  | 164h | 3,926 |
| 9 | 1.1.3.1 | Identify focus group member demographics |  | 1d | 2019-01-08 | 2019-01-09 | 6 | 0.33d | 0d | Jeff Pike; Yan Li; Brenda Diaz | 24h | 586 |
| 10 | 1.1.3.2 | Contact potential focus group members |  | 5d | 2019-01-09 | 2019-01-16 | 9 | 0.33d | 0d | Survey Team Member; Brad Sutton | 80h | 1,260 |
| 11 | 1.1.3.3 | Conduct focus groups |  | 1w | 2019-01-16 | 2019-01-24 | 10 | 0.33d | 0d | Food [0.1%]; Judy Lew; Annette Hill [50%] | 60h | 2,080 |
| 12 | 1.1.4 | **Observations** |  | 5.62d | 2019-01-24 | 2019-02-01 |  | 0.33d |  |  | 130h | 5,361.25 |
| 13 | 1.1.4.1 | Identify observation parameters |  | 4h | 2019-01-24 | 2019-01-25 | 11 | 0.33d | 0d | Brenda Diaz; Brad Sutton | 8h | 145 |
| 14 | 1.1.4.2 | Select observation locations |  | 1h | 2019-01-25 | 2019-01-25 | 13 | 0.33d | 0d | Brad Sutton; Brenda Diaz | 2h | 36.25 |
| 15 | 1.1.4.3 | Conduct observations |  | 1w | 2019-01-25 | 2019-02-01 | 14 | 0.33d | 0d | Food [0.1%]; Jamie Reding; Jeff Pike; Judy Lew; Travel [0.1%] | 120h | 5,180 |
| 16 | 1.1.5 | Research complete | milestone | 0d | 2019-02-01 | 2019-02-01 | 15 | 69.38d |  |  |  |  |
| 17 | 1.2 | **Analysis** |  | 13.96d | 2019-01-25 | 2019-02-14 |  | 0d |  |  | 282.6h | 7,567.25 |
| 18 | 1.2.1 | Analysis begins | milestone | 0d | 2019-01-25 | 2019-01-25 | 15SS | 0.33d | 0d |  |  |  |
| 19 | 1.2.2 | **Analysis of Research Data** |  | 7.96d | 2019-01-25 | 2019-02-06 |  | 0d |  |  | 162.6h | 4,285.25 |
| 20 | 1.2.2.1 | Analyze surveys, focus groups, and observations |  | 2.33d | 2019-01-25 | 2019-01-29 | 18 | 0d |  | Jamie Reding; David Barber; Scott Seely; Ryan Ihrig | 54.6h | 1,615.25 |
| 21 | 1.2.2.2 | Create follow up actions for secondary research |  | 1d | 2019-01-29 | 2019-01-30 | 20 | 0d |  | Annette Hill [50%]; Brenda Diaz; Brad Sutton; Eva Corets | 28h | 490 |
| 22 | 1.2.2.3 | Conduct secondary research |  | 1w | 2019-01-30 | 2019-02-06 | 21 | 0d |  | Jeff Pike; Judy Lew | 80h | 2,180 |
| 23 | 1.2.3 | **Report of Research Findings** |  | 7d | 2019-02-05 | 2019-02-14 |  | 0d |  |  | 120h | 3,282 |
| 24 | 1.2.3.1 | Compile draft copy of report |  | 8h | 2019-02-05 | 2019-02-06 | 22FF | 0d |  | Brenda Diaz | 8h | 158 |
| 25 | 1.2.3.2 | Draft copy review period |  | 5d | 2019-02-06 | 2019-02-13 | 24 | 0d |  | Bjorn Rettig; Brad Sutton | 80h | 2,060 |
| 26 | 1.2.3.3 | Review comments and compile final report |  | 1d | 2019-02-13 | 2019-02-14 | 25 | 0d |  | Brenda Diaz; David Barber; Jamie Reding; Greg Guzik | 32h | 1,064 |
| 27 | 1.2.4 | Analysis complete | milestone | 0d | 2019-02-14 | 2019-02-14 | 26 | 0d |  |  |  |  |

Notes:
- 7: Contact Mark Hanson in Marketing for additional resource support.

| ID | WBS | Task | Type | Duration | Start | Finish | Predecessors | Total slack | Resources | Work | Cost |
| --- | --- | --- | --- | --- | --- | --- | --- | --- | --- | --- | --- |
| 28 | 2 | **Design** |  | 8.25d | 2019-02-14 | 2019-02-26 |  | 0d |  | 190h | 5,301 |
| 29 | 2.1 | Design begins | milestone | 0d | 2019-02-14 | 2019-02-14 | 27 | 0d |  |  |  |
| 30 | 2.2 | Research Findings Evaluation |  | 1d | 2019-02-14 | 2019-02-15 | 29 | 0d | Jamie Reding; Judy Lew; Maria Hammond; David Barber | 32h | 1,106 |
| 31 | 2.3 | Design Document |  | 2d | 2019-02-15 | 2019-02-19 | 30 | 0d | Jamie Reding; Brenda Diaz | 32h | 916 |
| 32 | 2.4 | Proof of Concept |  | 5d | 2019-02-19 | 2019-02-26 | 31 | 0d | Model technician; Maria Hammond; Greg Guzik | 120h | 3,040 |
| 33 | 2.5 | Final Design Selection |  | 2h | 2019-02-26 | 2019-02-26 | 32 | 0d | Frank Zhang; Greg Guzik; Jamie Reding | 6h | 239 |
| 34 | 2.6 | Design complete | milestone | 0d | 2019-02-26 | 2019-02-26 | 33 | 0d |  |  |  |
| 35 | 3 | **Product Development** |  | 26d | 2019-02-26 | 2019-04-03 |  | 0d |  | 796h | 17,890 |
| 36 | 3.1 | Product development begins | milestone | 0d | 2019-02-26 | 2019-02-26 | 34 | 0d |  |  |  |
| 37 | 3.2 | Initial Prototype |  | 1w | 2019-02-26 | 2019-03-05 | 36 | 0d | Model technician [200%]; Jamie Reding; Jane Clayton | 120h | 3,860 |
| 38 | 3.3 | Internal Testing |  | 2w | 2019-03-05 | 2019-03-19 | 37 | 0d | Maria Hammond; Jim Kim; Model technician; Jamie Reding [25%]; Testing Field | 340h | 6,510 |
| 39 | 3.4 | Raw Materials List |  | 8h | 2019-03-19 | 2019-03-20 | 38 | 0d | Jamie Reding; Eva Corets | 16h | 420 |
| 40 | 3.5 | Parts Designation |  | 2w | 2019-03-20 | 2019-04-03 | 39 | 0d | Eva Corets; Jamie Reding; Brad Sutton; Brenda Diaz | 320h | 7,100 |
| 41 | 3.6 | Product development complete | milestone | 0d | 2019-04-03 | 2019-04-03 | 40 | 0d |  |  |  |
| 42 | 4 | **Production Planning** |  | 9.25d | 2019-04-03 | 2019-04-17 |  | 0d |  | 380h | 10,971 |
| 43 | 4.1 | Production planning begins | milestone | 0d | 2019-04-03 | 2019-04-03 | 41 | 0d |  |  |  |
| 44 | 4.2 | High-level Production Plan |  | 5d | 2019-04-03 | 2019-04-10 | 43 | 0d | Bjorn Rettig; Eva Corets; Frank Zhang; Jane Clayton; Large Conference Room; Model technician | 240h | 6,360 |
| 45 | 4.3 | Resource Planning |  | 3d | 2019-04-10 | 2019-04-15 | 44 | 0d | Judy Lew; Frank Zhang; Jamie Reding; Eva Corets; Bjorn Rettig | 120h | 4,008 |
| 46 | 4.4 | Quality Control Design |  | 1d | 2019-04-15 | 2019-04-16 | 45 | 0d | Maria Hammond; Jim Kim | 16h | 444 |
| 47 | 4.5 | Final Production Plan Approval |  | 2h | 2019-04-16 | 2019-04-17 | 46 | 0d | Judy Lew; Frank Zhang | 4h | 159 |
| 48 | 4.6 | Production planning complete | milestone | 0d | 2019-04-17 | 2019-04-17 | 47 | 0d |  |  |  |
| 49 | 5 | **Marketing** |  | 16.93d | 2019-04-17 | 2019-05-09 |  | 0d |  | 646.8h | 13,902.25 |
| 50 | 5.1 | Marketing phase begins | milestone | 0d | 2019-04-17 | 2019-04-17 | 48 | 0d |  |  |  |
| 51 | 5.2 | Marketing Strategy Development |  | 1d | 2019-04-17 | 2019-04-17 | 50 | 0d | Scott Seely; Brad Sutton; Brenda Diaz | 22.8h | 448.25 |
| 52 | 5.3 | Marketing Plan Development and Approval |  | 1d | 2019-04-18 | 2019-04-18 | 51 | 0d | Frank Zhang; Judy Lew; Ryan Ihrig | 24h | 764 |
| 53 | 5.4 | Marketing Materials |  | 3w | 2019-04-19 | 2019-05-09 | 52 | 0d | Jeff Pike; Brenda Diaz; Brad Sutton; Ryan Ihrig; Yan Li | 600h | 12,690 |
| 54 | 5.5 | Marketing phase complete | milestone | 0d | 2019-05-09 | 2019-05-09 | 53 | 0d |  |  |  |
| 55 | 6 | Project Management | milestone | 0d | 2019-01-07 | 2019-01-07 |  | 88.45d |  |  |  |
